# maisoneducation

Schedule from ProjectLibre, 2021-01-28 to 2021-03-29.

## Calendars

- Standard: Mon-Fri 08:00-12:00, 13:00-17:00; Sat-Sun off.

## Resources

| Resource | Rate |
| --- | --- |
| Non attribué |  |
| Chef de projet | 100 |
| Spécialiste système | 75 |
| Utilisateur avertis |  |
| Analyste programmeur | 50 |
| Analyste programmeur 2 | 50 |

## Schedule

| ID | WBS | Task | Duration | Start | Finish | Predecessors | Complete | Baseline start | Baseline finish | Baseline 1 start | Baseline 1 finish | Constraint | Resources |
| --- | --- | --- | --- | --- | --- | --- | --- | --- | --- | --- | --- | --- | --- |
| 1 | 1 | **Maison d'éducation** | 42.31d? | 2021-01-28 | 2021-03-29 |  | 28% | 2021-01-28 | 2021-03-24 | 2021-01-28 | 2021-03-29 |  |  |
| 2 | 1.1 | Etude préalable | 2.5d | 2021-01-28 | 2021-02-01 |  | 100% | 2021-01-28 | 2021-02-01 | 2021-01-28 | 2021-02-01 |  | Chef de projet |
| 3 | 1.2 | **Sous-projet "placement"** | 29.5d? | 2021-02-01 | 2021-03-12 |  | 44% | 2021-02-01 | 2021-03-08 | 2021-02-01 | 2021-03-12 |  |  |
| 4 | 1.2.1 | EP | 2.5d? | 2021-02-01 | 2021-02-03 | 2 | 100% | 2021-02-01 | 2021-02-03 | 2021-02-01 | 2021-02-03 |  | Chef de projet |
| 5 | 1.2.2 | Conception BD "enfant" (ED) | 10d | 2021-02-04 | 2021-02-17 | 4 | 100% | 2021-02-04 | 2021-02-17 | 2021-02-04 | 2021-02-17 |  | Spécialiste système |
| 6 | 1.2.3 | Fichier "enfant" (prog) | 3.75d? | 2021-02-25 | 2021-03-02 | 5 |  | 2021-02-18 | 2021-02-22 | 2021-02-25 | 2021-03-02 | start no earlier than 2021-02-25 | Analyste programmeur 2 [80%] |
| 7 | 1.2.4 | Affectation enfants-familles (prog) | 6.25d? | 2021-03-02 | 2021-03-11 | 5 |  | 2021-02-23 | 2021-03-01 | 2021-03-02 | 2021-03-11 | start no earlier than 2021-03-02 | Analyste programmeur [80%] |
| 8 | 1.2.5 | MAJ BD (départ enfants) prog | 3.75d? | 2021-03-02 | 2021-03-08 | 5 |  | 2021-03-02 | 2021-03-04 | 2021-03-02 | 2021-03-08 | start no earlier than 2021-03-02 | Analyste programmeur 2 [80%] |
| 9 | 1.2.6 | Test placement | 1.88d? | 2021-03-11 | 2021-03-12 | 6, 7, 8 |  | 2021-03-05 | 2021-03-08 | 2021-03-11 | 2021-03-12 | start no earlier than 2021-03-11 | Utilisateur avertis [80%] |
| 10 | 1.3 | **Sous-projet "suivi"** | 20.94d | 2021-02-01 | 2021-03-02 |  | 42% | 2021-02-01 | 2021-03-09 | 2021-02-01 | 2021-03-02 |  |  |
| 11 | 1.3.1 | Gestion d'un historique "enfant" (ED et prog) | 3.44d | 2021-02-25 | 2021-03-02 | 2 |  | 2021-03-05 | 2021-03-09 | 2021-02-25 | 2021-03-02 | start no earlier than 2021-02-25 | Spécialiste système [80%]; Analyste programmeur [80%] |
| 12 | 1.3.2 | Planning des visites (ED et prog) | 2.5d | 2021-02-01 | 2021-02-03 | 2 | 100% | 2021-02-01 | 2021-02-03 | 2021-02-01 | 2021-02-03 |  | Spécialiste système; Analyste programmeur |
| 13 | 1.4 | **Sous-projet "familles d'accueil"** | 32.62d? | 2021-02-04 | 2021-03-22 |  | 31% | 2021-02-04 | 2021-03-16 | 2021-02-04 | 2021-03-22 |  |  |
| 14 | 1.4.1 | EP | 2.5d? | 2021-02-04 | 2021-02-08 | 2 | 100% | 2021-02-04 | 2021-02-08 | 2021-02-04 | 2021-02-08 | start no earlier than 2021-02-04 | Chef de projet |
| 15 | 1.4.2 | Conception BD "familles" (ED) | 16.88d | 2021-02-08 | 2021-03-03 | 14 | 44% | 2021-02-08 | 2021-02-24 | 2021-02-08 | 2021-03-03 | start no earlier than 2021-01-28 | Chef de projet |
| 16 | 1.4.3 | fichier"famille" (prog) | 6d? | 2021-03-03 | 2021-03-11 | 15 |  | 2021-02-24 | 2021-03-04 | 2021-03-03 | 2021-03-11 | start no earlier than 2021-02-22 | Chef de projet |
| 17 | 1.4.4 | MAJ BD Recrutement, Renouvellement: prog | 5d? | 2021-03-11 | 2021-03-18 | 15 |  | 2021-03-05 | 2021-03-12 | 2021-03-11 | 2021-03-18 | start no earlier than 2021-03-11 | Chef de projet |
| 18 | 1.4.5 | Test famille | 1.88d? | 2021-03-18 | 2021-03-22 | 16, 17 |  | 2021-03-12 | 2021-03-16 | 2021-03-18 | 2021-03-22 | start no earlier than 2021-03-18 | Utilisateur avertis [80%] |
| 19 | 1.5 | **Sous-projet "allocations"** | 12.12d? | 2021-03-02 | 2021-03-18 |  |  | 2021-02-18 | 2021-03-18 | 2021-03-02 | 2021-03-18 |  |  |
| 20 | 1.5.1 | (ED) Conception BD compta | 6.25d? | 2021-03-02 | 2021-03-10 | 2 |  | 2021-02-18 | 2021-02-24 | 2021-03-02 | 2021-03-10 | start no earlier than 2021-03-02 | Spécialiste système [80%] |
| 21 | 1.5.2 | Procédure de versement (prog) | 3.75d? | 2021-03-10 | 2021-03-16 | 20 |  | 2021-03-09 | 2021-03-12 | 2021-03-10 | 2021-03-16 | start no earlier than 2021-03-10 | Analyste programmeur 2 [80%] |
| 22 | 1.5.3 | Procédure de mise à jour (arrêt, modification) | 3.12d? | 2021-03-11 | 2021-03-16 | 20 |  | 2021-03-12 | 2021-03-17 | 2021-03-11 | 2021-03-16 | start no earlier than 2021-03-11 | Analyste programmeur [80%] |
| 23 | 1.5.4 | Test alloc | 1.88d? | 2021-03-16 | 2021-03-18 | 21, 22 |  | 2021-03-17 | 2021-03-18 | 2021-03-16 | 2021-03-18 | start no earlier than 2021-03-16 | Utilisateur avertis [80%] |
| 24 | 1.6 | Intégration | 4.69d? | 2021-03-22 | 2021-03-29 | 23, 12, 11, 9, 18 |  | 2021-03-18 | 2021-03-24 | 2021-03-22 | 2021-03-29 | start no earlier than 2021-03-22 | Chef de projet; Utilisateur avertis [80%]; Analyste programmeur [80%]; Spécialiste système [80%] |
